How a schedule from OmniPlan changed from version to version. A marks actual dates.

## Version 1 (saved 2013-06-22)

Note of the change: Added GANTT chart for B2G near-term

| ID | Task | Start | Predecessors |
| --- | --- | --- | --- |
| 1 | JS Media Recorder API |  |  |
| 2 | (Native) Opus Encoder |  |  |
| 3 | (Native) Media Encoder Framework |  |  |
| 4 | Opus perf optimizations (recording) | 2013-06-20 |  |
| 5 | Design gUM permissions dialog | 2013-06-20 |  |
| 6 | Privacy review for B2G | 2013-07-18 | 5 |
| 7 | Implement gUM permissions dialog |  | 5 |
| 8 | App manifest properties for B2G permissions |  |  |
| 9 | Audio device module | 2013-06-20 |  |
| 10 | E10S: Interface prioritization | 2013-06-20 |  |
| 11 | E10S: UDP split functional | 2013-06-20 |  |
| 12 | E10S: UDP split performance | 2013-06-27 | 11 |
| 13 | E10S: Packet filter | 2013-07-04 |  |
| 14 | E10S: Packet filter review | 2013-08-01 | 13 |
| 15 | E10S: Audio input | 2013-08-02 |  |
| 16 | E10S: Video packet input | 2013-08-30 | 15 |
| 17 | Signaling path latency tuning (500 ms stalls) | 2013-06-20 |  |
| 18 | Profile audio latency | 2013-06-20 |  |
| 19 | Profile video latency | 2013-07-11 |  |
| 20 | Negotiate acceptable video parameters | 2013-06-27 |  |
| 21 | Automatically set video from negotiated ranges | 2013-07-11 | 20 |
| 22 | Working C++ unit tests on automation | 2013-06-20 |  |
| 23 | gUM mochitests on tbpl | 2013-07-19 |  |
| 24 | Prototype hardware encoding | 2013-06-20 |  |
| 25 | Improved perf benchmarks for A/V including microbenchmarks | 2013-07-18 | 24 |
| 26 | Determine best parameters for acceptable responsiveness | 2013-08-01 |  |
| 27 | Assess best-case video encoding complexity in software | 2013-08-15 |  |
| 28 | Assess best-case near-term audio encoding complexity | 2013-09-12 |  |
| 29 | Preliminary hardware encoding measurements | 2013-10-10 |  |
| 30 | ICE: handle dynamic network change | 2013-06-20 |  |

## Version 2 (saved 2013-06-22)

Note of the change: Reassigned some tasks

Changed:

| ID | Task | Start | Other |
| --- | --- | --- | --- |
| 20 | Negotiate acceptable video parameters | 2013-06-27 → 2013-06-20 (-7d) | resources ABR → ShianYow |
| 21 | Automatically set video from negotiated ranges | 2013-07-11 → 2013-07-04 (-7d) |  |
| 30 | ICE: handle dynamic network change | 2013-06-20 → 2013-07-11 (+21d) |  |
